# SMSC Project Plan Iter2

How a schedule from MS Project changed from version to version. A marks actual dates.

## Version 1 (saved 2002-04-08)

| ID | WBS | Task | Duration | Start | Finish | Predecessors | Complete | Total float | Constraint |
| --- | --- | --- | --- | --- | --- | --- | --- | --- | --- |
| 1 | 1 | **2. Разработка базовой функциональности центра** | 47d | 2002-03-18 A | 2002-05-24 |  | 10% | 0d |  |
| 2 | 1.1 | **SMSC Core** | 46d | 2002-03-18 A | 2002-05-24 |  | 16% | 1d |  |
| 3 | 1.1.1 | **Прототип SMS центра** | 26d | 2002-03-18 A | 2002-04-22 |  | 30% | 11d |  |
| 4 | 1.1.1.1 | **SME Manager** | 23d | 2002-03-18 A | 2002-04-17 |  | 61% | 14d |  |
| 5 |  | Архитектура | 4.1d | 2002-03-18 A | 2002-03-26 |  | 90% | 24.5d | start no earlier than 2002-03-18 |
| 6 |  | Разработка | 6.5d | 2002-03-19 A | 2002-03-28 A | 5 | 100% |  |  |
| 7 |  | Тесткейсы | 3d | 2002-04-08 | 2002-04-10 | 5 |  | 16d | start no earlier than 2002-04-08 |
| 8 |  | Тестирование | 3d | 2002-04-15 | 2002-04-17 | 7, 6 |  | 14d | start no earlier than 2002-04-15 |
| 9 | 1.1.1.2 | **SMPP transport support** | 19d | 2002-03-27 A | 2002-04-22 |  | 13% | 11d |  |
| 10 |  | Архитектура | 5.5d | 2002-03-27 A | 2002-04-03 |  | 30% | 1.5d | start no earlier than 2002-03-25 |
| 11 |  | Разработка | 2d | 2002-04-03 | 2002-04-05 | 10 |  | 1.5d |  |
| 12 |  | Тесткейсы | 2d | 2002-04-11 | 2002-04-12 | 10 |  | 14d | finish no earlier than 2002-04-12 |
| 13 |  | Тестирование | 3d | 2002-04-18 | 2002-04-22 | 12, 11 |  | 11d | start no earlier than 2002-04-18 |
| 14 | 1.1.1.3 | **SMSC application** | 9.5d | 2002-04-05 | 2002-04-18 | 6, 11 |  | 1.5d |  |
| 15 |  | Архитектура | 2d | 2002-04-05 | 2002-04-09 |  |  | 1.5d | start no earlier than 2002-04-03 |
| 16 |  | Разработка | 2d | 2002-04-09 | 2002-04-11 | 15 |  | 1.5d | finish no earlier than 2002-04-08 |
| 17 |  | Тесткейсы | 2d | 2002-04-15 | 2002-04-16 | 16 |  | 13d | start no earlier than 2002-04-15 |
| 18 |  | Тестирование | 2d | 2002-04-17 | 2002-04-18 | 16, 17, 19 |  | 13d |  |
| 19 | 1.1.1.4 | **Dummy SME** | 3d | 2002-04-11 | 2002-04-16 | 16 |  | 1.5d |  |
| 20 |  | Архитектура | 1d | 2002-04-11 | 2002-04-12 |  |  | 1.5d | start no earlier than 2002-04-05 |
| 21 |  | Разработка | 2d | 2002-04-12 | 2002-04-16 | 20 |  | 1.5d |  |
| 22 | 1.1.2 | **Router** | 21d | 2002-03-29 A | 2002-04-26 | 6 | 30% | 7d |  |
| 23 |  | Архитектура | 5d | 2002-03-29 A | 2002-04-03 |  | 30% | 12d | finish no earlier than 2002-04-02 |
| 24 |  | Разработка | 5d | 2002-04-01 A | 2002-04-05 | 23 | 60% | 13d |  |
| 25 |  | Тесткейсы | 2d | 2002-04-22 | 2002-04-23 | 23 |  | 7d | start no earlier than 2002-04-22 |
| 26 |  | Тестирование | 3d | 2002-04-24 | 2002-04-26 | 24, 25 |  | 7d |  |
| 27 | 1.1.3 | **Aliasing** | 14d | 2002-04-16 | 2002-05-08 | 11, 16, 21 |  | 1.5d |  |
| 28 |  | Архитектура | 4d | 2002-04-16 | 2002-04-22 |  |  | 1.5d | finish no earlier than 2002-04-02 |
| 29 |  | Разработка | 5d | 2002-04-22 | 2002-04-29 | 28 |  | 1.5d |  |
| 30 |  | Тесткейсы | 2d | 2002-04-29 | 2002-05-03 | 28, 29 |  | 1.5d | start no earlier than 2002-04-08 |
| 31 |  | Тестирование | 3d | 2002-05-03 | 2002-05-08 | 29, 30 |  | 1.5d |  |
| 32 | 1.1.4 | **Шедулер (передоставщик)** | 9d | 2002-04-15 | 2002-04-25 | 24 |  | 8d |  |
| 33 |  | Архитектура | 2d | 2002-04-15 | 2002-04-16 |  |  | 8d | start no earlier than 2002-04-15 |
| 34 |  | Разработка | 4d | 2002-04-17 | 2002-04-22 | 33 |  | 8d |  |
| 35 |  | Тесткейсы | 2d | 2002-04-17 | 2002-04-18 | 33 |  | 10d |  |
| 36 |  | Тестирование | 3d | 2002-04-23 | 2002-04-25 | 34, 35 |  | 8d |  |
| 37 |  | Первый билд ядра | 0d | 2002-05-08 | 2002-05-08 | 27, 32, 22, 3 |  | 1.5d | start no earlier than 2002-05-06 |
| 38 |  | MAP support (research) | 10d | 2002-05-08 | 2002-05-23 | 37 |  | 1.5d | start no earlier than 2002-05-07 |
| 39 |  | Тесткейсы | 4d | 2002-05-07 | 2002-05-13 | 28, 23 |  | 3d | start no earlier than 2002-05-07 |
| 40 |  | Тестирование | 6d | 2002-05-14 | 2002-05-21 | 37, 39 |  | 3d | start no earlier than 2002-05-06 |
| 41 |  | Альфа версия ядра | 0d | 2002-05-24 | 2002-05-24 | 40 |  | 1d | start no earlier than 2002-05-24 |
| 42 | 1.2 | **Система хранения сообщений** | 37d | 2002-03-18 A | 2002-05-10 |  | 34% | 10d |  |
| 43 | 1.2.1 | **Status update** | 4d | 2002-03-18 A | 2002-03-21 A |  | 100% |  |  |
| 44 |  | Архитектура | 1.12d | 2002-03-18 A | 2002-03-19 A |  | 100% |  |  |
| 45 |  | Разработка | 2d | 2002-03-19 A | 2002-03-21 A | 44 | 100% |  |  |
| 46 |  | Тесткейсы | 0.88d | 2002-03-19 A | 2002-03-19 A | 44 | 100% |  |  |
| 47 |  | Тестирование | 1d | 2002-03-20 A | 2002-03-20 A | 46, 45 | 100% |  |  |
| 48 | 1.2.2 | **Архиватор** | 11d | 2002-03-19 A | 2002-04-02 A | 43 | 100% |  |  |
| 49 |  | Архитектура | 3d | 2002-03-19 A | 2002-03-25 A |  | 100% |  |  |
| 50 |  | Разработка | 2d | 2002-03-28 A | 2002-03-29 A | 49 | 100% |  |  |
| 51 |  | Тесткейсы | 1d | 2002-03-29 A | 2002-03-29 A | 49 | 100% |  | start no earlier than 2002-03-27 |
| 52 |  | Тестирование | 4d | 2002-03-29 A | 2002-04-02 A | 51, 50 | 100% |  |  |
| 53 | 1.2.3 | **Доработка системы хранения** | 11d | 2002-04-04 | 2002-04-18 | 48 |  | 11d |  |
| 54 |  | Архитектура | 4d | 2002-04-04 | 2002-04-09 |  |  | 11d | start no earlier than 2002-04-04 |
| 55 |  | Разработка | 4d | 2002-04-10 | 2002-04-15 | 54 |  | 11d |  |
| 56 |  | Тесткейсы | 2d | 2002-04-10 | 2002-04-11 | 54 |  | 13d |  |
| 57 |  | Тестирование | 3d | 2002-04-16 | 2002-04-18 | 55, 56 |  | 11d |  |
| 58 | 1.2.4 | **Запросы для шедулера** | 7d | 2002-04-22 | 2002-04-30 | 53, 33 |  | 10d |  |
| 59 |  | Архитектура | 2d | 2002-04-22 | 2002-04-23 |  |  | 10d | start no earlier than 2002-04-22 |
| 60 |  | Разработка | 2d | 2002-04-24 | 2002-04-25 | 59 |  | 10d |  |
| 61 |  | Тесткейсы | 1d | 2002-04-24 | 2002-04-24 | 59 |  | 11d |  |
| 62 |  | Тестирование | 3d | 2002-04-26 | 2002-04-30 | 60, 61 |  | 10d |  |
| 63 |  | Оптимизация индексов таблиц | 3d | 2002-05-06 | 2002-05-08 | 58 |  | 11d | start no earlier than 2002-05-06 |
| 64 |  | Performance and stress testing | 5d | 2002-05-03 | 2002-05-10 | 58 |  | 10d |  |
| 65 | 1.3 | **Интерфейс администратора** | 44d | 2002-03-18 | 2002-05-22 |  |  | 3d |  |
| 66 |  | Разработка прототипа веб приложения | 10d | 2002-03-18 | 2002-03-29 |  |  | 14d | start no earlier than 2002-03-18 |
| 67 |  | Daemon management | 10d | 2002-03-18 | 2002-03-29 |  |  | 14d | start no earlier than 2002-03-18 |
| 68 |  | Config management | 3d | 2002-04-03 | 2002-04-05 | 67, 66 |  | 12d | start no earlier than 2002-04-03 |
| 69 |  | Security management | 5d | 2002-04-08 | 2002-04-12 | 68 |  | 12d |  |
| 70 |  | Анализ модуля оперативной статитики | 3d | 2002-04-17 | 2002-04-19 | 69 |  | 10d | start no earlier than 2002-04-17 |

| ID | WBS | Task | Duration | Start | Finish | Predecessors | Total float | Constraint |
| --- | --- | --- | --- | --- | --- | --- | --- | --- |
| 71 |  | Модуль оперативной статистики | 7d | 2002-04-22 | 2002-04-30 | 70 | 10d |  |
| 72 |  | Система администрирования маршрутов и алиасов | 5d | 2002-05-08 | 2002-05-16 | 71, 37 | 6.5d |  |
| 73 |  | Прототип системы администрирования | 0d | 2002-05-22 | 2002-05-22 | 72 | 3d | start no earlier than 2002-05-22 |
| 74 | 1.4 | **Разное** | 47d | 2002-03-18 | 2002-05-24 |  | 0d |  |
| 75 |  | Поддержка среды разработки | 45d | 2002-03-18 | 2002-05-22 |  | 2d | start no earlier than 2002-03-18 |
| 76 |  | Собрания | 47d | 2002-03-18 | 2002-05-24 |  | 0d | finish no earlier than 2002-05-24 |
| 77 |  | Консультации | 47d | 2002-03-18 | 2002-05-24 |  | 0d | start no earlier than 2002-03-18 |

## Version 2 (saved 2002-04-11)

Last finish stays 2002-05-24. Complete tasks 9 → 22.

Added:

| ID | Task | Duration | Start | Finish | Predecessors | Resources |
| --- | --- | --- | --- | --- | --- | --- |
| 39 | **Поддержка сложных маршрутов** | 3d | 2002-04-24 | 2002-04-29 | 29 |  |
| 40 | Архитектура и планирование | 3d | 2002-04-24 | 2002-04-29 |  | Рыжков Виктор; Чен Алексей |

Removed: 69 Security management; 70 Анализ модуля оперативной статитики; 71 Модуль оперативной статистики; 72 Система администрирования маршрутов и алиасов; 73 Прототип системы администрирования

Changed:

| ID | Task | Start | Finish | Duration | Complete | Total float | Predecessors | Other |
| --- | --- | --- | --- | --- | --- | --- | --- | --- |
| 1 | **2. Разработка базовой функциональности центра** | 2002-03-18 A → 2002-03-15 A (-3d) |  | 47d → 48d | 10% → 29% |  |  |  |
| 2 | **SMSC Core** |  |  |  | 16% → 39% |  |  |  |
| 3 | **Прототип SMS центра** |  | 2002-04-22 → 2002-04-18 (-4d) | 26d → 24d | 30% → 73% | 11d → 13d |  |  |
| 4 | **SME Manager** |  |  |  | 61% → 78% |  |  |  |
| 5 | Архитектура |  | 2002-03-26 A | 4.1d → 6.5d | 90% → 100% | 24.5d → none |  | resources Чен Алексей [200%]; Рыжков Виктор [50%] → Чен Алексей [200%]; Рыжков Виктор |
| 7 | Тесткейсы | 2002-04-08 A | 2002-04-10 → 2002-04-09 (-1d) | 3d → 2d | 0% → 50% | 16d → 17d |  | resources Брызгалов Виталий [50%] → Брызгалов Виталий |
| 9 | **SMPP transport support** | 2002-03-27 A → 2002-03-25 A (-2d) | 2002-04-22 → 2002-04-17 (-5d) | 19d → 18d | 13% → 71% | 11d → 14d |  |  |
| 10 | Архитектура | 2002-03-27 A → 2002-03-25 A (-2d) | 2002-04-03 A | 5.5d → 7.5d | 30% → 100% | 1.5d → none |  | resources Рыжков Виктор [50%]; Ступник Константин → Рыжков Виктор [200%]; Ступник Константин |
| 11 | Разработка | 2002-04-03 A | 2002-04-05 → 2002-04-04 A (-1d) | 2d → 1.5d | 0% → 100% | 1.5d → none |  | resources Ступник Константин → Ступник Константин [200%] |
| 13 | Тестирование | 2002-04-18 → 2002-04-08 A (-10d) | 2002-04-22 → 2002-04-17 (-5d) | 3d → 6d | 0% → 50% | 11d → 14d |  |  |
| 14 | **SMSC application** | 2002-04-05 → 2002-04-01 A (-4d) |  | 9.5d → 14d | 0% → 64% | 1.5d → 13d |  |  |
| 15 | Архитектура | 2002-04-05 → 2002-04-01 A (-4d) | 2002-04-09 → 2002-04-04 A (-5d) |  | 0% → 100% | 1.5d → none |  | resources Ступник Константин; Рыжков Виктор [20%] → Ступник Константин [12.5%]; Рыжков Виктор [50%] |
| 16 | Разработка | 2002-04-09 → 2002-04-01 A (-8d) | 2002-04-11 → 2002-04-09 A (-2d) | 2d → 5d | 0% → 100% | 1.5d → none |  | resources Ступник Константин → Ступник Константин; Чен Алексей |
| 19 | **Dummy SME** | 2002-04-11 → 2002-04-04 A (-7d) | 2002-04-16 → 2002-04-05 A (-11d) | 3d → 2d | 0% → 100% | 1.5d → none |  |  |
| 20 | Архитектура | 2002-04-11 → 2002-04-04 A (-7d) | 2002-04-12 → 2002-04-05 A (-7d) | 1d → 2d | 0% → 100% | 1.5d → none |  | resources Ступник Константин; Рыжков Виктор [20%] → Ступник Константин [12.5%]; Рыжков Виктор [50%] |
| 21 | Разработка | 2002-04-12 → 2002-04-05 A (-7d) | 2002-04-16 → 2002-04-05 A (-11d) | 2d → 1d | 0% → 100% | 1.5d → none |  |  |
| 22 | **Router** |  |  |  | 30% → 56% |  |  |  |
| 23 | Архитектура |  | 2002-04-03 → 2002-03-31 A (-3d) | 5d → 2d | 30% → 100% | 12d → none |  |  |
| 24 | Разработка |  | 2002-04-05 → 2002-04-11 (+6d) | 5d → 5.5d | 60% → 91% | 13d → 9.5d |  |  |
| 27 | **Aliasing** | 2002-04-16 → 2002-04-11 (-5d) | 2002-05-08 → 2002-05-03 (-5d) |  |  | 1.5d → 4.5d | 11, 16, 21 → 16, 6, 24 |  |
| 28 | Архитектура | 2002-04-16 → 2002-04-11 (-5d) | 2002-04-22 → 2002-04-17 (-5d) |  |  | 1.5d → 4.5d |  | resources Рыжков Виктор [50%]; Ступник Константин → Рыжков Виктор [50%]; Чен Алексей |
| 29 | Разработка | 2002-04-22 → 2002-04-17 (-5d) | 2002-04-29 → 2002-04-24 (-5d) |  |  | 1.5d → 4.5d |  | resources Ступник Константин → Чен Алексей |
| 30 | Тесткейсы | 2002-04-29 → 2002-04-24 (-5d) | 2002-05-03 → 2002-04-26 (-7d) |  |  | 1.5d → 4.5d |  |  |
| 31 | Тестирование | 2002-05-03 → 2002-04-26 (-7d) | 2002-05-08 → 2002-05-03 (-5d) |  |  | 1.5d → 4.5d |  | resources Брызгалов Виталий [50%]; Ступник Константин → Брызгалов Виталий [50%]; Чен Алексей |
| 32 | **Шедулер (передоставщик)** |  |  |  |  |  | 24 → 11, 16, 21 |  |
| 33 | Архитектура |  |  |  |  |  |  | resources Рыжков Виктор [50%]; Чен Алексей → Рыжков Виктор [50%]; Ступник Константин |
| 34 | Разработка |  |  |  |  |  |  | resources Чен Алексей → Ступник Константин |
| 36 | Тестирование |  |  |  |  |  |  | resources Брызгалов Виталий; Чен Алексей [50%] → Брызгалов Виталий; Ступник Константин [50%] |
| 37 | Первый билд ядра | 2002-05-08 → 2002-05-06 (-2d) | 2002-05-08 → 2002-05-06 (-2d) |  |  | 1.5d → 4d |  |  |
| 38 | MAP support (research) | 2002-05-08 → 2002-05-07 (-1d) | 2002-05-23 → 2002-05-21 (-2d) |  |  | 1.5d → 3d |  |  |
| 44 | **Система хранения сообщений** |  | 2002-05-10 → 2002-05-16 (+6d) | 37d → 41d | 34% → 56% | 10d → 6d |  |  |
| 50 | **Архиватор** |  | 2002-04-02 A → 2002-04-03 A (+1d) | 11d → 12d |  |  |  |  |
| 54 | Тестирование |  | 2002-04-02 A → 2002-04-03 A (+1d) | 4d → 5d |  |  |  | resources Макаров Виктор [62.5%]; Брызгалов Виталий [50%] → Макаров Виктор; Брызгалов Виталий [50%] |
| 55 | **Доработка системы хранения** | 2002-04-04 → 2002-04-03 A (-1d) | 2002-04-18 → 2002-04-15 (-3d) | 11d → 9d | 0% → 73% |  |  |  |
| 56 | Архитектура | 2002-04-04 → 2002-04-03 A (-1d) | 2002-04-09 → 2002-04-05 A (-4d) | 4d → 3d | 0% → 100% | 11d → none |  | resources Рыжков Виктор [20%]; Брызгалов Виталий [50%]; Макаров Виктор → Рыжков Виктор [62.5%]; Брызгалов Виталий [62.5%]; Макаров Виктор [56.2%] |
| 57 | Разработка | 2002-04-10 → 2002-04-05 A (-5d) | 2002-04-15 → 2002-04-09 A (-6d) | 4d → 3d | 0% → 100% | 11d → none |  | resources Макаров Виктор → Макаров Виктор [112.5%] |
| 58 | Тесткейсы | 2002-04-10 → 2002-04-09 A (-1d) | 2002-04-11 → 2002-04-10 A (-1d) |  | 0% → 100% | 13d → none |  | resources Брызгалов Виталий [50%] → Брызгалов Виталий |
| 59 | Тестирование | 2002-04-16 → 2002-04-11 (-5d) | 2002-04-18 → 2002-04-15 (-3d) |  |  |  |  |  |
| 66 | Performance and stress testing | 2002-05-03 → 2002-05-10 (+7d) | 2002-05-10 → 2002-05-16 (+6d) |  |  | 10d → 6d | 60 → 65 | constraint none → start no earlier than 2002-05-10; baseline start 2002-05-03 → 2002-05-10; baseline finish 2002-05-10 → 2002-05-16 |
| 67 | **Интерфейс администратора** | 2002-03-18 → 2002-03-15 A (-3d) | 2002-05-22 → 2002-04-19 (-33d) | 44d → 26d | 0% → 83% | 3d → 22d |  |  |
| 68 | Разработка прототипа веб приложения | 2002-03-18 → 2002-03-21 A (+3d) | 2002-03-29 → 2002-04-11 A (+13d) |  | 0% → 100% | 14d → none |  | resources Каляткин Игорь [50%] → Каляткин Игорь |
| 69 | Daemon management | 2002-03-18 → 2002-03-15 A (-3d) | 2002-03-29 → 2002-04-11 A (+13d) | 10d → 15d | 0% → 100% | 14d → none |  | resources Каляткин Игорь [50%] → Каляткин Игорь |
| 70 | Доработка архитектура системы администрирования | 2002-04-03 → 2002-04-15 (+12d) | 2002-04-05 → 2002-04-19 (+14d) | 3d → 5d |  | 12d → 22d |  | was named Config management; constraint start no earlier than 2002-04-03 → finish no earlier than 2002-04-19; resources Каляткин Игорь → Каляткин Игорь; Рыжков Виктор [50%]; Чен Алексей [20%]; Ступник Константин [20%]; baseline start 2002-04-03 → 2002-04-15; baseline finish 2002-04-05 → 2002-04-19 |

## Version 3 (saved 2002-04-12)

Last finish stays 2002-05-24.

Changed:

| ID | Task | Other |
| --- | --- | --- |
| 39 | **Поддержка сложных маршрутов** | baseline start none → 2002-04-24; baseline finish none → 2002-04-29 |
| 40 | Архитектура и планирование | baseline start none → 2002-04-24; baseline finish none → 2002-04-29 |

## Version 4 (saved 2002-05-08)

Last finish 2002-05-24 → 2002-06-26 (+33d). Complete tasks 22 → 38.

Added:

| ID | Task | Duration | Start | Finish | Predecessors | Constraint | Resources |
| --- | --- | --- | --- | --- | --- | --- | --- |
| 35 | EventQueue | 5d | 2002-04-24 A | 2002-04-30 A |  |  | Чен Алексей |
| 36 | SMS StateMachine | 4d | 2002-04-26 A | 2002-04-30 A |  |  | Ступник Константин [114.3%] |
| 37 | Scheduler | 1d | 2002-05-06 | 2002-05-06 | 36 |  | Ступник Константин |
| 42 | **SMPP API** | 7d | 2002-04-29 A | 2002-05-13 |  |  |  |
| 43 | Архитектура | 3d | 2002-04-29 A | 2002-05-06 |  | start no earlier than 2002-04-29 | Рыжков Виктор; Брызгалов Виталий [50%]; Ступник Константин [50%] |
| 44 | Разработка | 3d | 2002-05-07 | 2002-05-12 | 43 |  | Ступник Константин |
| 45 | Тесткейсы | 1d | 2002-05-12 | 2002-05-12 | 43 | start no earlier than 2002-05-12 | Брызгалов Виталий |
| 46 | Тестирование | 1d | 2002-05-13 | 2002-05-13 | 44, 45 |  | Брызгалов Виталий; Ступник Константин [50%] |
| 73 | Анализ dbSME от SoftPro | 6d | 2002-04-18 A | 2002-04-25 A |  | finish no earlier than 2002-04-22 | Макаров Виктор [75%]; Рыжков Виктор [50%] |
| 80 | **Service Registration Wizard** | 16.12d | 2002-04-22 A | 2002-05-16 |  |  |  |
| 81 | Архитектура | 2.5d | 2002-04-22 A | 2002-04-24 A |  | start no earlier than 2002-04-18 | Каляткин Игорь; Рыжков Виктор [18.8%] |
| 82 | Разработка | 5d | 2002-04-24 | 2002-04-30 | 81 |  | Каляткин Игорь |
| 83 | Тесткейсы | 2d | 2002-05-13 | 2002-05-14 | 81 | start no earlier than 2002-05-13 | Брызгалов Виталий |
| 84 | Тестирование | 2d | 2002-05-15 | 2002-05-16 | 82, 83 |  | Брызгалов Виталий [50%]; Каляткин Игорь |
| 85 | **Route editor** | 12.62d | 2002-04-30 | 2002-05-22 | 82 |  |  |
| 86 | Архитектура | 3d | 2002-04-30 | 2002-05-08 |  |  | Каляткин Игорь; Рыжков Виктор [50%] |
| 87 | Разработка | 6d | 2002-05-12 | 2002-05-17 | 86 | start no earlier than 2002-05-12 | Каляткин Игорь |
| 88 | Тесткейсы | 2d | 2002-05-16 | 2002-05-17 | 86 | start no earlier than 2002-05-16 | Брызгалов Виталий |
| 89 | Тестирование | 3d | 2002-05-20 | 2002-05-22 | 87, 88 |  | Каляткин Игорь; Брызгалов Виталий [50%] |
| 90 | **DB SME** | 36d | 2002-05-07 | 2002-06-26 |  |  |  |
| 91 | **DB Driver** | 17d | 2002-05-07 | 2002-05-30 |  |  |  |
| 92 | Архитектура | 1d | 2002-05-07 | 2002-05-07 |  | start no earlier than 2002-05-07 | Рыжков Виктор [50%]; Макаров Виктор |
| 93 | Реализация | 5d | 2002-05-08 | 2002-05-15 | 92 |  | Макаров Виктор |
| 94 | Тесткейсы | 1d | 2002-05-27 | 2002-05-27 | 92 | start no earlier than 2002-05-27 |  |
| 95 | Тестирование | 3d | 2002-05-28 | 2002-05-30 | 93, 94 |  |  |
| 96 | **Command processing** | 14d | 2002-05-16 | 2002-06-04 | 93 |  |  |
| 97 | Архитектура | 3d | 2002-05-16 | 2002-05-20 |  |  |  |
| 98 | Реализация | 2d | 2002-05-21 | 2002-05-22 | 97 |  |  |
| 99 | Тесткейсы | 1d | 2002-05-31 | 2002-05-31 | 97, 95 | start no earlier than 2002-05-27 |  |
| 100 | Тестирование | 2d | 2002-06-03 | 2002-06-04 | 99, 98 |  |  |
| 101 | **SQL Job** | 12d | 2002-05-23 | 2002-06-07 | 98 |  |  |
| 102 | Архитектура | 1d | 2002-05-23 | 2002-05-23 |  |  |  |
| 103 | Реализация | 2d | 2002-05-24 | 2002-05-27 | 102 |  |  |
| 104 | Тесткейсы | 1d | 2002-06-05 | 2002-06-05 | 102, 100 | start no earlier than 2002-05-27 |  |
| 105 | Тестирование | 2d | 2002-06-06 | 2002-06-07 | 103, 104 |  |  |
| 106 | **SME App** | 15d | 2002-05-28 | 2002-06-17 | 103 |  |  |
| 107 | Архитектура | 2d | 2002-05-28 | 2002-05-29 |  |  |  |
| 108 | Реализация | 4d | 2002-05-30 | 2002-06-04 | 107 |  |  |
| 109 | Тесткейсы | 2d | 2002-06-10 | 2002-06-11 | 107, 105 | start no earlier than 2002-05-27 |  |
| 110 | Тестирование | 4d | 2002-06-12 | 2002-06-17 | 108, 109 |  |  |
| 111 | **IO Formats** | 16d | 2002-06-05 | 2002-06-26 | 108 |  |  |
| 112 | Архитектура | 3d | 2002-06-05 | 2002-06-07 |  |  |  |
| 113 | Реализация | 5d | 2002-06-10 | 2002-06-14 | 112 |  |  |
| 114 | Тесткейсы | 3d | 2002-06-18 | 2002-06-20 | 112, 110 | start no earlier than 2002-05-27 |  |
| 115 | Тестирование | 4d | 2002-06-21 | 2002-06-26 | 113, 114 |  |  |

Changed:

| ID | Task | Start | Finish | Duration | Complete | Total float | Other |
| --- | --- | --- | --- | --- | --- | --- | --- |
| 1 | **2. Разработка базовой функциональности центра** |  | 2002-05-24 → 2002-06-26 (+33d) | 48d → 71.12d | 29% → 36% |  |  |
| 2 | **SMSC Core** |  | 2002-05-24 → 2002-05-27 (+3d) | 46d → 48.12d | 39% → 62% | 1d → 22d |  |
| 3 | **Прототип SMS центра** |  | 2002-04-18 → 2002-04-29 (+11d) | 24d → 32.12d | 73% → 88% | 13d → 28d |  |
| 4 | **SME Manager** |  | 2002-04-17 → 2002-04-29 (+12d) | 23d → 32.12d | 78% → 76% | 14d → 28d |  |
| 7 | Тесткейсы |  | 2002-04-09 → 2002-04-17 A (+8d) | 2d → 3d | 50% → 100% | 17d → none | resources Брызгалов Виталий → Брызгалов Виталий [106.2%] |
| 8 | Тестирование | 2002-04-15 → 2002-04-22 A (+7d) | 2002-04-17 → 2002-04-29 (+12d) | 3d → 6.12d | 0% → 12% | 14d → 6d | resources Брызгалов Виталий [50%]; Чен Алексей → Брызгалов Виталий [31.2%]; Чен Алексей |
| 9 | **SMPP transport support** |  | 2002-04-17 → 2002-04-25 (+8d) | 18d → 24d | 71% → 91% | 14d → 31.12d |  |
| 12 | Тесткейсы | 2002-04-11 → 2002-04-16 A (+5d) | 2002-04-12 → 2002-04-25 A (+13d) | 2d → 5d | 0% → 100% | 14d → none | resources Брызгалов Виталий [50%] → Брызгалов Виталий [112.5%] |
| 13 | Тестирование |  | 2002-04-17 → 2002-04-22 (+5d) | 6d → 5d | 50% → 67% | 14d → 34.12d |  |
| 14 | **SMSC application** |  | 2002-04-18 A |  | 64% → 100% | 13d → none |  |
| 17 | Тесткейсы | 2002-04-15 A | 2002-04-16 A |  | 0% → 100% | 13d → none |  |
| 18 | Тестирование | 2002-04-17 → 2002-04-12 A (-5d) | 2002-04-18 A | 2d → 4d | 0% → 100% | 13d → none |  |
| 22 | **Router** |  | 2002-04-26 → 2002-04-29 (+3d) | 21d → 23.12d | 56% → 85% | 7d → 28d |  |
| 24 | Разработка |  | 2002-04-11 → 2002-04-15 A (+4d) | 5.5d → 7.5d | 91% → 100% | 9.5d → none | resources Чен Алексей → Чен Алексей [200%] |
| 25 | Тесткейсы | 2002-04-22 → 2002-04-19 A (-3d) | 2002-04-23 → 2002-04-24 A (+1d) |  | 0% → 100% | 7d → none | resources Брызгалов Виталий [50%] → Брызгалов Виталий [37.5%] |
| 26 | Тестирование | 2002-04-24 → 2002-04-18 A (-6d) | 2002-04-26 → 2002-04-29 (+3d) | 3d → 8d | 0% → 64% | 7d → 5d | resources Брызгалов Виталий [50%]; Чен Алексей → Брызгалов Виталий [112.5%]; Чен Алексей |
| 27 | **Aliasing** | 2002-04-11 → 2002-04-16 A (+5d) | 2002-05-03 → 2002-04-29 (-4d) | 14d → 11d | 0% → 38% | 4.5d → 28.12d |  |
| 28 | Архитектура | 2002-04-11 → 2002-04-16 A (+5d) | 2002-04-17 → 2002-04-16 A (-1d) | 4d → 1d | 0% → 100% | 4.5d → none | resources Рыжков Виктор [50%]; Чен Алексей → Рыжков Виктор [25%]; Чен Алексей [112.5%] |
| 29 | Разработка | 2002-04-17 A | 2002-04-24 → 2002-04-23 A (-1d) | 5d → 2d | 0% → 100% | 4.5d → none |  |
| 30 | Тесткейсы |  | 2002-04-26 → 2002-04-25 (-1d) |  |  | 4.5d → 5.12d |  |
| 31 | Тестирование |  | 2002-05-03 → 2002-04-29 (-4d) |  |  | 4.5d → 5.12d |  |
| 32 | **SMS workflow** | 2002-04-15 A | 2002-04-25 → 2002-05-13 (+18d) | 9d → 18.12d | 0% → 65% | 8d → 22d | was named Шедулер (передоставщик); baseline finish 2002-04-25 → 2002-04-30 |
| 33 | Архитектура | 2002-04-15 A | 2002-04-16 → 2002-04-22 A (+6d) | 2d → 6d | 0% → 100% | 8d → none | constraint start no earlier than 2002-04-15 → start no earlier than 2002-04-11; resources Рыжков Виктор [50%]; Ступник Константин → Рыжков Виктор; Ступник Константин; Чен Алексей; baseline start 2002-04-15 → 2002-04-11; baseline finish 2002-04-16 → 2002-04-17 |
| 34 | **Разработка** | 2002-04-17 → 2002-04-24 A (+7d) | 2002-04-22 → 2002-05-06 (+14d) | 4d → 7.12d | 0% → 90% | 8d → 22d | resources Ступник Константин → Ступник Константин; Чен Алексей; baseline start 2002-04-17 → 2002-04-18; baseline finish 2002-04-22 → 2002-04-23 |
| 38 | Тесткейсы | 2002-04-17 → 2002-04-23 (+6d) | 2002-04-18 → 2002-04-25 (+7d) | 2d → 3d |  | 10d → 4.12d | constraint none → start no earlier than 2002-04-22; resources Брызгалов Виталий [50%] → Брызгалов Виталий; baseline start 2002-04-17 → 2002-04-22; baseline finish 2002-04-18 → 2002-04-24 |
| 39 | Тестирование | 2002-04-23 → 2002-05-07 (+14d) | 2002-04-25 → 2002-05-13 (+18d) | 3d → 4d |  | 8d → 15d | resources Брызгалов Виталий; Ступник Константин [50%] → Брызгалов Виталий [75%]; Ступник Константин; Чен Алексей; baseline start 2002-04-23 → 2002-04-25; baseline finish 2002-04-25 → 2002-04-30 |
| 40 | Первый билд ядра | 2002-05-06 → 2002-05-13 (+7d) | 2002-05-06 → 2002-05-13 (+7d) |  |  | 4d → 15d |  |
| 41 | MAP support (research) | 2002-05-07 → 2002-05-14 (+7d) | 2002-05-21 → 2002-05-27 (+6d) |  |  | 3d → 15d |  |
| 47 | **Поддержка сложных маршрутов** | 2002-04-24 → 2002-05-06 (+12d) | 2002-04-29 → 2002-05-08 (+9d) |  |  | 16.5d → 34d |  |
| 48 | Архитектура и планирование | 2002-04-24 → 2002-05-06 (+12d) | 2002-04-29 → 2002-05-08 (+9d) |  |  | 16.5d → 11d | constraint none → start no earlier than 2002-05-06; baseline start 2002-04-24 → 2002-05-06; baseline finish 2002-04-29 → 2002-05-08 |
| 52 | **Система хранения сообщений** |  | 2002-05-16 → 2002-05-21 (+5d) | 41d → 43.25d | 56% → 75% | 6d → 26.88d |  |
| 63 | **Доработка системы хранения** |  | 2002-04-15 → 2002-04-16 A (+1d) | 9d → 10d | 73% → 100% | 11d → none |  |
| 67 | Тестирование | 2002-04-11 → 2002-04-10 A (-1d) | 2002-04-15 → 2002-04-16 A (+1d) | 3d → 5d | 0% → 100% | 11d → none | resources Брызгалов Виталий [50%]; Макаров Виктор → Брызгалов Виталий; Макаров Виктор |
| 68 | **Запросы для шедулера** | 2002-04-22 → 2002-04-16 A (-6d) | 2002-04-30 → 2002-05-08 (+8d) | 7d → 14.25d | 0% → 45% | 7d → 26.88d |  |
| 69 | Архитектура | 2002-04-22 → 2002-04-16 A (-6d) | 2002-04-23 → 2002-04-18 A (-5d) | 2d → 3d | 0% → 100% | 7d → none | resources Брызгалов Виталий [50%]; Рыжков Виктор [25%]; Макаров Виктор → Брызгалов Виталий [11.5%]; Рыжков Виктор [5.8%]; Макаров Виктор [25%] |
| 70 | Разработка | 2002-04-24 → 2002-04-27 A (+3d) | 2002-04-25 → 2002-04-30 (+5d) | 2d → 2.25d | 0% → 50% | 7d → 4.88d |  |
| 71 | Тесткейсы | 2002-04-24 → 2002-04-23 (-1d) | 2002-04-24 → 2002-04-23 (-1d) |  |  | 8d → 9.12d |  |
| 72 | Тестирование | 2002-04-26 → 2002-04-30 (+4d) | 2002-04-30 → 2002-05-08 (+8d) |  |  | 7d → 4.88d |  |
| 74 | Оптимизация индексов таблиц | 2002-05-06 → 2002-05-08 (+2d) | 2002-05-08 → 2002-05-14 (+6d) |  |  | 6d → 4.88d |  |
| 75 | Performance and stress testing | 2002-05-10 → 2002-05-14 (+4d) | 2002-05-16 → 2002-05-21 (+5d) |  |  | 6d → 4.88d |  |
| 76 | **Интерфейс администратора** |  | 2002-04-19 → 2002-05-22 (+33d) | 26d → 46.12d | 83% → 61% | 22d → 2d |  |
| 78 | Daemon management |  | 2002-04-11 A → 2002-04-15 A (+4d) | 15d → 17d |  |  | resources Каляткин Игорь → Каляткин Игорь [150%] |
| 79 | Доработка архитектура системы администрирования | 2002-04-15 A | 2002-04-19 → 2002-04-22 A (+3d) | 5d → 6d | 0% → 100% | 22d → none | resources Каляткин Игорь; Рыжков Виктор [50%]; Чен Алексей [20%]; Ступник Константин [20%] → Каляткин Игорь [112.5%]; Рыжков Виктор [50%]; Чен Алексей [20%]; Ступник Константин [20%] |
| 116 | **Разное** |  |  | 47d → 47.12d |  | 0d → 23d |  |
